# GestionProyecto

Schedule from MS Project, 2013-04-03 to 2013-04-03.
Hewlett-Packard

## Calendars

- Estándar: Mon-Fri 09:00-13:00, 15:00-19:00; Sat-Sun off.

## Schedule

| ID | WBS | Task | Type | Duration | Start | Finish |
| --- | --- | --- | --- | --- | --- | --- |
| 1 | 1 | **1 TOTAL PROYECTO** |  | 1d | 2013-04-03 | 2013-04-03 |
| 2 | 1.1 | **1.1 PREPARACION PARA LA FORMULACION** |  | 1d | 2013-04-03 | 2013-04-03 |
| 3 | 1.1.1 | 1.1.1 INICIO | manual | 1d | 2013-04-03 | 2013-04-03 |
| 4 | 1.1.2 | 1.1.2 TERMINOS DE REFERENCIA | manual | 1d | 2013-04-03 | 2013-04-03 |
| 5 | 1.1.3 | 1.1.3 FINANCIACION | manual | 1d | 2013-04-03 | 2013-04-03 |
| 6 | 1.1.4 | 1.1.4 COMITÉ DE COORDINACION | manual | 1d | 2013-04-03 | 2013-04-03 |
| 7 | 1.1.5 | 1.1.5 EQUIPO DE FORMULACION | manual | 1d | 2013-04-03 | 2013-04-03 |
| 8 | 1.1.6 | 1.1.6 METODOLOGIA Y PLAN DE TRABAJO | manual | 1d | 2013-04-03 | 2013-04-03 |
| 9 | 1.1.7 | 1.1.7 DOC Nº1 | manual | 1d | 2013-04-03 | 2013-04-03 |
| 10 | 1.1.8 | 1.1.8 ENTREGA DOC Nº1 | manual | 1d | 2013-04-03 | 2013-04-03 |
| 11 | 1.1.9 | 1.1.9 SEMINARIO LANZ. POYECTO | manual | 1d | 2013-04-03 | 2013-04-03 |
| 12 | 1.2 | **1.2 ANALASIS Y DIAGNOSTICO** |  | 1d | 2013-04-03 | 2013-04-03 |
| 13 | 1.2.1 | 1.2.1 ANALISIS ANTECEDENTES | manual | 1d | 2013-04-03 | 2013-04-03 |
| 14 | 1.2.2 | 1.2.1.1 POLITICAS Y PROGRAMAS | manual | 1d | 2013-04-03 | 2013-04-03 |
| 15 | 1.2.3 | 1.2.1.2 MARCO LEGAL | manual | 1d | 2013-04-03 | 2013-04-03 |
| 16 | 1.2.4 | 1.2.1.3 BD EXISTENTE | manual | 1d | 2013-04-03 | 2013-04-03 |
| 17 | 1.2.5 | 1.2.2 ANALISIS AREA PROYECTO | manual | 1d | 2013-04-03 | 2013-04-03 |
| 18 | 1.2.6 | 1.2.2.1 INVENTARIO AMBIENAL | manual | 1d | 2013-04-03 | 2013-04-03 |
| 19 | 1.2.7 | 1.2.2.2 INFRAESTTRUCTURAS Y SERVIC | manual | 1d | 2013-04-03 | 2013-04-03 |
| 20 | 1.2.8 | 1.2.2.3 ANALISIS DE SECTORES | manual | 1d | 2013-04-03 | 2013-04-03 |
| 21 | 1.2.9 | 1.2.2.4 ANALISIS POBLACIONAL | manual | 1d | 2013-04-03 | 2013-04-03 |
| 22 | 1.2.10 | 1.2.2.5 SISTEMA TERRITORIAL INFO | manual | 1d | 2013-04-03 | 2013-04-03 |
| 23 | 1.2.11 | 1.2.3 ANALISIS AGENE Y PARTICIPACION | manual | 1d | 2013-04-03 | 2013-04-03 |
| 24 | 1.2.12 | 1.2.3.1 IDENT. AGENTES Y TIPOLOGIA | manual | 1d | 2013-04-03 | 2013-04-03 |
| 25 | 1.2.13 | 1.2.3.2 ENCUESTA CON LOS AGENTES | manual | 1d | 2013-04-03 | 2013-04-03 |
| 26 | 1.2.14 | 1.2.3.3 TALLER DE PARTICIPACION AP | manual | 1d | 2013-04-03 | 2013-04-03 |
| 27 | 1.2.15 | 1.2.3.4 ANALISIS PROSPECIVO "SIN" | manual | 1d | 2013-04-03 | 2013-04-03 |
| 28 | 1.2.16 | 1.2.3.5 INFORME DE PARTICIPACION | manual | 1d | 2013-04-03 | 2013-04-03 |
| 29 | 1.2.17 | 1.2.3.6 PRESENTACION Y VAL. CONCLUSIONES | manual | 1d | 2013-04-03 | 2013-04-03 |
| 30 | 1.2.18 | 1.2.4 CONCLUSIONES Y DOC Nº2 | manual | 1d | 2013-04-03 | 2013-04-03 |
| 31 | 1.2.19 | 1.2.5 DOC Nº2 REVISION PROMOTOR | manual | 1d | 2013-04-03 | 2013-04-03 |

| ID | WBS | Task | Type | Duration | Start | Finish | Total slack |
| --- | --- | --- | --- | --- | --- | --- | --- |
| 32 | 1.3 | **1.3 DISEÑO DEL PROYECTO** |  | 1d | 2013-04-03 | 2013-04-03 | 0d |
| 33 | 1.3.1 | 1.3.1 OBJETTIVOS Y METAS | manual | 1d | 2013-04-03 | 2013-04-03 |  |
| 34 | 1.3.2 | 1.3.2 ALTERNATIVAS ESTRATEGICAS | manual | 1d | 2013-04-03 | 2013-04-03 |  |
| 35 | 1.3.3 | 1.3.3 FORMULACION DE LOS COMPONENTTES | manual | 1d | 2013-04-03 | 2013-04-03 |  |
| 36 | 1.3.4 | 1.3.4 DISEÑO DE LA ORGANIZACIÓN | manual | 1d | 2013-04-03 | 2013-04-03 |  |
| 37 | 1.3.5 | 1.3.5 SISTEMA DE SEGUIMIENTO Y EVALUACION | manual | 1d | 2013-04-03 | 2013-04-03 |  |
| 38 | 1.3.6 | 1.3.6 PRESUPUESTACION | manual | 1d | 2013-04-03 | 2013-04-03 |  |
| 39 | 1.3.7 | 1.3.7 DOC Nº3 ENTREGRA PROMOTOR | manual | 1d | 2013-04-03 | 2013-04-03 |  |
| 40 | 1.3.8 | 1.3.8 DOC Nº3 REVISION PROMOTOR | manual | 1d | 2013-04-03 | 2013-04-03 |  |
| 41 | 1.4 | **1.4 EVALUACION MULTICRITERIO** |  | 1d | 2013-04-03 | 2013-04-03 | 0d |
| 42 | 1.4.1 | 1.4.1 EVALUACION ECONOMICO-FINANCIERA | manual | 1d | 2013-04-03 | 2013-04-03 |  |
| 43 | 1.4.2 | 1.4.2 EVALUACION SOCIOAL Y CULTTURAL | manual | 1d | 2013-04-03 | 2013-04-03 |  |
| 44 | 1.4.3 | 1.4.3 EVALUACION AMBIENTAL | manual | 1d | 2013-04-03 | 2013-04-03 |  |
| 45 | 1.4.4 | 1.4.4 EVALUACION DE RIESGO, SEGURIDAD Y SALUD DEL PROYECTO | manual | 1d | 2013-04-03 | 2013-04-03 |  |
| 46 | 1.4.5 | 1.4.5 ENTREGA DOC Nº 4 | manual | 1d | 2013-04-03 | 2013-04-03 |  |
| 47 | 1.4.6 | 1.4.6 REVISION DOC Nº4 | manual | 1d | 2013-04-03 | 2013-04-03 |  |
| 48 | 1.5 | **1.5 DOCUMENTACION** |  | 1d | 2013-04-03 | 2013-04-03 | 0d |
| 49 | 1.5.1 | 1.5.1 MEMORIA | manual | 1d | 2013-04-03 | 2013-04-03 |  |
| 50 | 1.5.2 | 1.5.2 ANEXOS A LA MEMORIA | manual | 1d | 2013-04-03 | 2013-04-03 |  |
| 51 | 1.5.3 | 1.5.3 PLANOS | manual | 1d | 2013-04-03 | 2013-04-03 |  |
| 52 | 1.5.4 | 1.5.4 PLIEGO DE CONDICIONES | manual | 1d | 2013-04-03 | 2013-04-03 |  |
| 53 | 1.5.5 | 1.5.5 PRESUPUESTO | manual | 1d | 2013-04-03 | 2013-04-03 |  |
| 54 | 1.5.6 | 1.5.6 ESTUDIO DE SEGURIDAD Y SALUD | manual | 1d | 2013-04-03 | 2013-04-03 |  |
| 55 | 1.5.7 | 1.5.7 ENTREGA DEL PROYECTO | manual | 1d | 2013-04-03 | 2013-04-03 |  |
